How a schedule from MS Project changed from version to version. A marks actual dates.

## Version 1 (data date 2022-09-27, saved 2022-10-29, file Lab-3_Bài-4.mpp)

Note of the change: Merge branch 'master' into Khanh/lab1

| ID | WBS | Task | Duration | Start | Finish | Predecessors | Total float |
| --- | --- | --- | --- | --- | --- | --- | --- |
| 1 | 1 | **Design** | 13d | 2022-09-27 | 2022-10-13 |  | 0d |
| 2 |  | Thiết kế kiến trúc phần mềm | 4.38d | 2022-09-27 | 2022-10-03 |  |  |
| 3 |  | Tìm hiểu xác định công nghệ | 4.38d | 2022-10-06 | 2022-10-12 | 2 |  |
| 4 |  | Thiết kế UI/UX | 7.25d | 2022-09-29 | 2022-10-10 |  |  |
| 5 |  | Thiết kế DB | 4.38d | 2022-10-06 | 2022-10-12 | 2 |  |
| 6 | 1.5 | **API Documents** | 6d | 2022-10-06 | 2022-10-13 |  |  |
| 7 |  | API Doc phần 1 | 2.38d | 2022-10-06 | 2022-10-07 |  |  |
| 8 |  | API Doc phần 2 | 2.38d | 2022-10-11 | 2022-10-12 | 7 |  |
| 9 | 2 | **Setup Environment** | 6d | 2022-10-17 | 2022-10-23 |  |  |
| 10 |  | Xây dựng môi trường dev | 5d | 2022-10-17 | 2022-10-21 | 3, 4, 5, 6, 8 |  |
| 11 | 3 | **Development** | 20.38d | 2022-10-17 | 2022-11-14 |  | 0d |
| 12 | 3.1 | **Xây dựng giao diện** | 8d | 2022-10-17 | 2022-10-26 |  |  |
| 13 |  | Xây dựng giao diện Đăng nhập, đăng xuất, đăng ký chung cho toàn bộ actors | 1.5d | 2022-10-17 | 2022-10-18 |  |  |
| 14 |  | Xây dựng giao diện phân chia role, permission theo account | 1.5d | 2022-10-17 | 2022-10-18 |  |  |
| 15 |  | Xây dựng giao diện người dùng | 1.5d | 2022-10-19 | 2022-10-20 | 13 |  |
| 16 |  | Xây dựng giao diện Quản lý sách | 1.5d | 2022-10-19 | 2022-10-20 | 14 |  |
| 17 |  | Xây dựng giao diện gửi yêu cầu mua, mượn trả sách | 1.5d | 2022-10-21 | 2022-10-22 | 15 |  |
| 18 |  | Xây dựng giao diện quản lý nhập sách | 1.5d | 2022-10-21 | 2022-10-22 | 16 |  |
| 19 |  | Xây dựng giao diện tìm kiếm thông tin, tình trạng sách | 1.5d | 2022-10-25 | 2022-10-26 | 17 |  |
| 20 |  | Xây dựng giao diện đọc sách trực tuyến | 1.5d | 2022-10-25 | 2022-10-26 | 18 |  |
| 21 | 3.2 | **Xây dựng API** | 14d | 2022-10-17 | 2022-11-03 | 10 |  |
| 22 |  | Xây dựng API đăng nhập, đăng xuất, đăng ký chung cho toàn bộ actors | 4.88d | 2022-10-17 | 2022-10-21 |  |  |
| 23 |  | Xây dựng API phân chia role, permission theo account | 1.5d | 2022-10-24 | 2022-10-25 |  |  |
| 24 |  | Xây dựng API quản lý người dùng | 3d | 2022-10-26 | 2022-10-28 | 22 |  |
| 25 |  | Xây dựng API quản lý sách | 3.75d | 2022-10-26 | 2022-10-31 | 23 |  |
| 26 |  | Xây dựng API gửi yêu cầu mua, mượn trả sách | 3.25d | 2022-10-28 | 2022-11-01 |  |  |
| 27 |  | Xây dựng API quản lý nhập sách | 3.5d | 2022-10-17 | 2022-10-20 | 4, 5 |  |
| 28 |  | Xây dựng API tìm kiếm thông tin, tình trạng sách | 1.5d | 2022-11-02 | 2022-11-03 |  |  |
| 29 |  | Xây dựng API đọc sách trực tuyến | 1.5d | 2022-11-02 | 2022-11-03 |  |  |
| 30 |  | Áp dụng API vào giao diện | 4.38d | 2022-11-08 | 2022-11-14 | 35, 12 |  |
| 31 | 4 | **Testing** | 24.25d | 2022-10-27 | 2022-11-30 |  | 0d |
| 32 |  | Component Testing | 5.25d | 2022-10-27 | 2022-11-02 | 12 |  |
| 33 |  | System Test | 14.12d | 2022-11-08 | 2022-11-25 |  |  |
| 34 |  | Unit Testing | 9.25d | 2022-11-17 | 2022-11-30 | 30 |  |
| 35 |  | Intergration Testing | 1.5d | 2022-11-04 | 2022-11-05 | 21 |  |

## Version 2 (data date 2022-11-22, saved 2022-11-17, file lab4.mpp)

Last finish stays 2022-11-30. Complete tasks 0 → 18.

Added:

| ID | Task | Duration | Start | Finish |
| --- | --- | --- | --- | --- |
| 1 | **Library** | 46.25d | 2022-09-27 A | 2022-11-30 |

Changed:

| ID | Task | Start | Finish | Duration | Complete | Total float | Other |
| --- | --- | --- | --- | --- | --- | --- | --- |
| 2 | **Design** | 2022-09-27 A |  |  | 0% → 100% | 0d → none | baseline start none → 2022-09-27; baseline finish none → 2022-10-13 |
| 3 | Thiết kế kiến trúc phần mềm | 2022-09-27 A | 2022-10-03 → 2022-10-04 A (+1d) | 4.38d → 6d | 0% → 100% |  | resources Hung; Luong; Vi; FrontEnd Server → Hung; Luong; Vi; baseline start none → 2022-09-27; baseline finish none → 2022-10-03 |
| 4 | Tìm hiểu xác định công nghệ | 2022-10-06 → 2022-10-05 A (-1d) | 2022-10-12 A | 4.38d → 6d | 0% → 100% |  | baseline start none → 2022-10-06; baseline finish none → 2022-10-12 |
| 5 | Thiết kế UI/UX | 2022-09-29 → 2022-09-27 A (-2d) | 2022-10-10 → 2022-10-11 A (+1d) | 7.25d → 11d | 0% → 100% |  | resources Bao; FrontEnd Server → Bao; baseline start none → 2022-09-29; baseline finish none → 2022-10-10 |
| 6 | Thiết kế DB | 2022-10-06 → 2022-10-04 A (-2d) | 2022-10-12 → 2022-10-11 A (-1d) | 4.38d → 6d | 0% → 100% |  | baseline start none → 2022-10-06; baseline finish none → 2022-10-12 |
| 7 | **API Documents** | 2022-10-06 A |  |  | 0% → 100% |  | baseline start none → 2022-10-06; baseline finish none → 2022-10-13 |
| 8 | API Doc phần 1 | 2022-10-06 A | 2022-10-07 A | 2.38d → 2d | 0% → 100% |  | baseline start none → 2022-10-06; baseline finish none → 2022-10-07 |
| 9 | API Doc phần 2 | 2022-10-11 → 2022-10-07 A (-4d) | 2022-10-12 → 2022-10-11 A (-1d) | 2.38d → 3d | 0% → 100% |  | baseline start none → 2022-10-11; baseline finish none → 2022-10-12 |
| 10 | **Setup Environment** | 2022-10-17 A |  |  | 0% → 100% |  | baseline start none → 2022-10-17; baseline finish none → 2022-10-23 |
| 11 | Xây dựng môi trường dev | 2022-10-17 A | 2022-10-21 A |  | 0% → 100% |  | baseline start none → 2022-10-17; baseline finish none → 2022-10-21 |
| 12 | **Development** | 2022-10-17 A |  |  | 0% → 67% |  | baseline start none → 2022-10-17; baseline finish none → 2022-11-14 |
| 13 | **Xây dựng giao diện** | 2022-10-17 A | 2022-10-26 A |  | 0% → 100% |  | baseline start none → 2022-10-17; baseline finish none → 2022-10-26 |
| 14 | Xây dựng giao diện Đăng nhập, đăng xuất, đăng ký chung cho toàn bộ actors | 2022-10-17 A | 2022-10-18 A |  | 0% → 100% |  | baseline start none → 2022-10-17; baseline finish none → 2022-10-18 |
| 15 | Xây dựng giao diện phân chia role, permission theo account | 2022-10-17 A | 2022-10-18 A |  | 0% → 100% |  | baseline start none → 2022-10-17; baseline finish none → 2022-10-18 |
| 16 | Xây dựng giao diện người dùng | 2022-10-19 A | 2022-10-20 A |  | 0% → 100% |  | baseline start none → 2022-10-19; baseline finish none → 2022-10-20 |
| 17 | Xây dựng giao diện Quản lý sách | 2022-10-19 A | 2022-10-20 A |  | 0% → 100% |  | baseline start none → 2022-10-19; baseline finish none → 2022-10-20 |
| 18 | Xây dựng giao diện gửi yêu cầu mua, mượn trả sách | 2022-10-21 A | 2022-10-22 A |  | 0% → 100% |  | baseline start none → 2022-10-21; baseline finish none → 2022-10-22 |
| 19 | Xây dựng giao diện quản lý nhập sách | 2022-10-21 A | 2022-10-22 → 2022-10-23 A (+1d) | 1.5d → 2d | 0% → 100% |  | baseline start none → 2022-10-21; baseline finish none → 2022-10-22 |
| 20 | Xây dựng giao diện tìm kiếm thông tin, tình trạng sách | 2022-10-25 A | 2022-10-26 A |  | 0% → 100% |  | baseline start none → 2022-10-25; baseline finish none → 2022-10-26 |
| 21 | Xây dựng giao diện đọc sách trực tuyến | 2022-10-25 A | 2022-10-26 A |  | 0% → 100% |  | baseline start none → 2022-10-25; baseline finish none → 2022-10-26 |
| 22 | **Xây dựng API** | 2022-10-17 A |  |  | 0% → 61% |  | baseline start none → 2022-10-17; baseline finish none → 2022-11-03 |
| 23 | Xây dựng API đăng nhập, đăng xuất, đăng ký chung cho toàn bộ actors | 2022-10-17 A | 2022-10-21 A | 4.88d → 5d | 0% → 100% |  | baseline start none → 2022-10-17; baseline finish none → 2022-10-21 |
| 24 | Xây dựng API phân chia role, permission theo account | 2022-10-24 A | 2022-10-25 A |  | 0% → 100% |  | baseline start none → 2022-10-24; baseline finish none → 2022-10-25 |
| 25 | Xây dựng API quản lý người dùng | 2022-10-26 A |  |  | 0% → 50% |  | baseline start none → 2022-10-26; baseline finish none → 2022-10-28 |
| 26 | Xây dựng API quản lý sách | 2022-10-26 A |  |  | 0% → 60% |  | baseline start none → 2022-10-26; baseline finish none → 2022-10-31 |
| 27 | Xây dựng API gửi yêu cầu mua, mượn trả sách | 2022-10-28 A |  |  | 0% → 5% |  | baseline start none → 2022-10-28; baseline finish none → 2022-11-01 |
| 28 | Xây dựng API quản lý nhập sách | 2022-10-17 A | 2022-10-20 A | 3.5d → 4d | 0% → 100% |  | baseline start none → 2022-10-17; baseline finish none → 2022-10-20 |
| 29 | Xây dựng API tìm kiếm thông tin, tình trạng sách |  |  |  |  |  | baseline start none → 2022-11-02; baseline finish none → 2022-11-03 |
| 30 | Xây dựng API đọc sách trực tuyến |  |  |  |  |  | baseline start none → 2022-11-02; baseline finish none → 2022-11-03 |
| 31 | Áp dụng API vào giao diện |  |  |  |  |  | baseline start none → 2022-11-08; baseline finish none → 2022-11-14 |
| 32 | **Testing** | 2022-10-27 A |  |  | 0% → 1% |  | baseline start none → 2022-10-27; baseline finish none → 2022-11-30 |
| 33 | Component Testing | 2022-10-27 A |  |  | 0% → 5% |  | baseline start none → 2022-10-27; baseline finish none → 2022-11-02 |
| 34 | System Test |  |  |  |  |  | baseline start none → 2022-11-08; baseline finish none → 2022-11-25 |
| 35 | Unit Testing |  |  |  |  |  | baseline start none → 2022-11-17; baseline finish none → 2022-11-30 |
| 36 | Intergration Testing |  |  |  |  |  | baseline start none → 2022-11-04; baseline finish none → 2022-11-05 |
